# Projet manette

How a schedule from MS Project changed from version to version. A marks actual dates.

## Version 1 (saved 2019-04-09)

Note of the change: Update plan_projet_manette_2019.mpp

| ID | WBS | Task | Duration | Start | Finish | Predecessors | Complete | Total float | Constraint |
| --- | --- | --- | --- | --- | --- | --- | --- | --- | --- |
| 1 | 1 | **Analyse** | 10d | 2019-03-04 A | 2019-03-18 A |  | 100% |  |  |
| 2 |  | Lecture du classeur | 2d | 2019-03-04 A | 2019-03-05 A |  | 100% |  |  |
| 3 |  | Recherche de documentation | 2d | 2019-03-06 A | 2019-03-07 A |  | 100% |  |  |
| 4 |  | Choix des composants | 3d | 2019-03-12 A | 2019-03-14 A |  | 100% |  |  |
| 5 |  | Décision sur le module Bluetooth | 1d | 2019-03-07 A | 2019-03-07 A |  | 100% |  |  |
| 6 |  | Commande d'ESP32 | 0d | 2019-03-08 A | 2019-03-08 A | 5 | 100% |  |  |
| 7 |  | Rédaction du cahier des charges | 1d | 2019-03-15 A | 2019-03-15 A |  | 100% |  | start no earlier than 2019-03-15 |
| 8 |  | Fin de phase préprojet | 0d | 2019-03-18 A | 2019-03-18 A | 7 | 100% |  |  |
| 9 | 2 | **Mise en place de la communication** | 18d | 2019-03-08 A | 2019-04-03 A |  | 100% |  |  |
| 10 |  | Délai de livraison de la commande ESP32 | 11d | 2019-03-08 A | 2019-03-22 A | 6 | 100% |  | finish no earlier than 2019-03-22 |
| 11 |  | Test Arduino ESP32 | 4d | 2019-03-22 A | 2019-03-27 A | 10 | 100% |  |  |
| 12 |  | Mise en place d'un protocole définitif: RBCP | 3d | 2019-03-28 A | 2019-04-01 A | 11 | 100% |  |  |
| 13 |  | Protocole RBCP établi, fonctionnel | 0d | 2019-04-02 A | 2019-04-02 A | 12 | 100% |  |  |
| 14 |  | Mise en place d'une interface rudimentaire (manette breadboard) | 2d | 2019-04-01 A | 2019-04-02 A | 13 | 100% |  |  |
| 15 |  | Manette breadboard fonctionnelle | 0d | 2019-04-03 A | 2019-04-03 A | 14 | 100% |  |  |
| 16 | 3 | **Conception layout** | 36d | 2019-03-08 A | 2019-05-10 |  | 33% | 42d |  |
| 17 |  | Définition des élements (voir README) | 1d | 2019-04-02 A | 2019-04-02 A |  | 100% |  |  |
| 18 |  | Commande des élements | 0d | 2019-04-03 A | 2019-04-03 A | 17 | 100% |  |  |
| 19 |  | Délai de commande des élements | 5d | 2019-04-03 A | 2019-04-09 | 18 | 80% | 48d | start no earlier than 2019-04-03 |
| 20 |  | Mise en place des élements sur le PCB | 2d | 2019-04-10 | 2019-04-11 | 19 |  | 53d |  |
| 21 |  | Schéma électrique | 2d | 2019-03-08 A | 2019-03-11 A |  | 100% |  |  |
| 22 |  | Conception de PCB | 4d | 2019-04-08 A | 2019-04-11 | 21 | 25% | 46d | start no earlier than 2019-04-08 |
| 23 |  | PCB prêt pour commande | 0d | 2019-04-11 | 2019-04-11 | 22 |  | 53d |  |
| 24 |  | Prototypage | 10d | 2019-04-29 | 2019-05-10 |  |  | 30d | start no earlier than 2019-04-28 |
| 25 | 4 | **Assemblage** | 12d | 2019-05-13 | 2019-05-28 |  |  | 23d |  |
| 26 |  | Conception Batterie | 2d | 2019-05-13 | 2019-05-14 | 24 |  | 30d |  |
| 27 |  | Commande batterie | 0d | 2019-05-14 | 2019-05-14 | 26 |  | 23d |  |
| 28 |  | Délai commande de batterie | 5d | 2019-05-15 | 2019-05-21 | 27 |  | 28d | start no earlier than 2019-05-06 |
| 29 |  | Conception du boitier | 10d | 2019-05-15 | 2019-05-28 | 27 |  | 23d |  |
| 30 |  | Manette universelle montée | 0d | 2019-05-28 | 2019-05-28 | 29 |  | 23d |  |
| 31 | 5 | **Adaptation minotaure** | 10d | 2019-04-29 | 2019-05-10 |  |  | 35d |  |
| 32 |  | Prog boutons NKK | 10d | 2019-04-29 | 2019-05-10 |  |  | 35d | start no earlier than 2019-04-29 |
| 33 |  | Modification grand boîtier | 2d | 2019-05-06 | 2019-05-07 |  |  | 37d | start no earlier than 2019-05-06 |
| 34 |  | Montage manette minotaure | 1d | 2019-05-08 | 2019-05-08 | 33 |  | 37d |  |
| 35 |  | Manette minotaure terminée | 0d | 2019-05-08 | 2019-05-08 | 34 |  | 37d |  |
| 36 | 6 | **Adaptation manette console rétro** | 2d | 2019-04-29 | 2019-04-30 |  |  | 43d |  |
| 37 |  | Implémentation Bluetooth et batterie dans la manette existante | 2d | 2019-04-29 | 2019-04-30 |  |  | 43d | start no earlier than 2019-04-29 |
| 38 |  | Adaptation manette console rétro terminée | 0d | 2019-04-30 | 2019-04-30 | 37 |  | 43d |  |
| 39 | 7 | **Administratif** | 74d | 2019-03-04 A | 2019-06-27 |  | 36% | 1d |  |
| 40 |  | Rédaction des documents techniques | 71d | 2019-03-04 A | 2019-06-25 |  | 37% | 1d | finish no earlier than 2019-06-25 |
| 41 |  | Rédaction du rapport final | 2d | 2019-06-26 | 2019-06-27 | 40 |  | 1d |  |
| 42 |  | Rédaction cahier des charges pour le projet Chevaliers et Dragon | 0d | 2019-03-14 A | 2019-03-14 A |  | 100% |  | start no earlier than 2019-03-14 |
| 43 |  | Rédaction cahier des charges pour le projet Robot MCT | 0d | 2019-04-08 | 2019-04-08 |  |  | 50d | start no earlier than 2019-04-08 |
| 44 |  | Présentation sur GitHub | 0d | 2019-03-19 A | 2019-03-19 A |  | 100% |  | start no earlier than 2019-03-19 |
| 45 |  | Revue de projet | 0d | 2019-03-28 | 2019-03-28 |  |  | 56d | finish no earlier than 2019-03-28 |
| 46 |  | Présentation projet | 0d | 2019-04-01 A | 2019-04-01 A |  | 100% |  | finish no earlier than 2019-04-01 |
| 47 |  | Bilan du projet | 0d | 2019-05-27 | 2019-05-27 |  |  | 25d | start no earlier than 2019-05-27 |
| 48 |  | Mini portes ouvertes publiques | 0d | 2019-07-01 | 2019-07-01 |  |  | 0d | start no earlier than 2019-07-01 |

## Version 2 (saved 2019-04-11)

Note of the change: doc

Last finish stays 2019-07-01.

Changed:

| ID | Task | Start | Finish | Duration | Complete | Total float |
| --- | --- | --- | --- | --- | --- | --- |
| 16 | **Conception layout** |  |  |  | 33% → 44% |  |
| 19 | Délai de commande des élements |  | 2019-04-09 → 2019-04-12 (+3d) | 5d → 8d | 80% → 75% | 48d → 43d |
| 20 | Mise en place des élements sur le PCB | 2019-04-10 → 2019-04-29 (+19d) | 2019-04-11 → 2019-04-30 (+19d) |  |  | 53d → 43d |
| 22 | Conception de PCB |  |  |  | 25% → 75% |  |

## Version 3 (saved 2019-04-11)

Note of the change: update schema

Last finish stays 2019-07-01. Complete tasks 19 → 21.

Added:

| ID | Task | Duration | Start | Finish | Predecessors | Constraint |
| --- | --- | --- | --- | --- | --- | --- |
| 24 | Fabrication du PCB de la manette universelle | 5d | 2019-05-02 | 2019-05-08 | 23 |  |
| 33 | Conception du PCB des boutons NKK | 3d | 2019-04-08 A | 2019-04-10 A |  | start no earlier than 2019-04-08 |
| 34 | PCB des boutons NKK prêt pour commande | 0d | 2019-04-12 A | 2019-04-12 A | 33 |  |
| 35 | Fabrication du PCB des boutons NKK | 15d | 2019-04-12 | 2019-05-16 | 34 |  |

Changed:

| ID | Task | Start | Finish | Duration | Complete | Total float | Other |
| --- | --- | --- | --- | --- | --- | --- | --- |
| 16 | **Conception layout** |  |  |  | 44% → 31% | 42d → 35d |  |
| 22 | Conception du PCB de la manette universelle |  | 2019-04-11 → 2019-05-01 (+20d) |  | 75% → 25% | 46d → 37d | was named Conception de PCB |
| 23 | PCB prêt pour commande | 2019-04-11 → 2019-05-01 (+20d) | 2019-04-11 → 2019-05-01 (+20d) |  |  | 53d → 37d |  |
| 32 | **Adaptation minotaure** | 2019-04-29 → 2019-04-08 A (-21d) | 2019-05-10 → 2019-05-16 (+6d) | 10d → 19d | 0% → 10% | 35d → 31d |  |

## Version 4 (saved 2019-05-07)

Last finish stays 2019-07-01. Complete tasks 21 → 25.

Changed:

| ID | Task | Start | Finish | Duration | Complete | Total float | Predecessors | Other |
| --- | --- | --- | --- | --- | --- | --- | --- | --- |
| 16 | **Conception layout manette universelle** |  | 2019-05-10 → 2019-05-17 (+7d) | 36d → 41d | 31% → 60% | 35d → 29d |  | was named Conception layout |
| 19 | Délai de commande des élements |  | 2019-04-12 → 2019-05-07 A (+25d) | 8d → 15d | 75% → 100% | 43d → none |  | constraint start no earlier than 2019-04-03 → finish no earlier than 2019-05-07 |
| 20 | Mise en place des élements sur le PCB | 2019-04-29 → 2019-05-16 (+17d) | 2019-04-30 → 2019-05-17 (+17d) |  |  | 43d → 29d | 19 → 19, 24 | constraint none → start no earlier than 2019-05-16 |
| 22 | Conception du PCB de la manette universelle |  | 2019-05-01 → 2019-05-07 A (+6d) | 4d → 8d | 25% → 100% | 37d → none |  |  |
| 23 | PCB prêt pour commande | 2019-05-01 → 2019-05-07 A (+6d) | 2019-05-01 → 2019-05-07 A (+6d) |  | 0% → 100% | 37d → none |  |  |
| 24 | Fabrication du PCB de la manette universelle | 2019-05-02 → 2019-05-08 (+6d) | 2019-05-08 → 2019-05-14 (+6d) |  |  | 37d → 30d |  |  |
| 26 | **Assemblage** | 2019-05-13 A |  |  | 0% → 44% | 23d → 22d |  |  |
| 30 | Conception du boitier | 2019-05-15 A |  |  | 0% → 75% | 23d → 22d |  |  |
| 32 | **Adaptation minotaure** |  | 2019-05-16 → 2019-05-10 (-6d) | 19d → 15d | 10% → 32% | 31d → 34d |  |  |
| 35 | Fabrication du PCB des boutons NKK | 2019-04-12 A | 2019-05-16 → 2019-04-30 A (-16d) | 15d → 3d | 0% → 100% | 31d → none |  | constraint none → finish no earlier than 2019-04-30 |
| 43 | **Administratif** |  | 2019-06-27 → 2019-07-01 (+4d) |  |  | 1d → 0d |  |  |
| 44 | Rédaction des documents techniques |  | 2019-06-25 → 2019-06-27 (+2d) |  |  | 1d → 0d |  |  |
| 45 | Rédaction du rapport final | 2019-06-26 → 2019-06-28 (+2d) | 2019-06-27 → 2019-07-01 (+4d) |  |  | 1d → 0d |  |  |

## Version 5 (saved 2019-05-09)

Last finish stays 2019-07-01.

Removed: 25 Prototypage

Changed:

| ID | Task | Start | Finish | Duration | Complete | Total float | Predecessors | Other |
| --- | --- | --- | --- | --- | --- | --- | --- | --- |
| 16 | **Conception layout manette universelle** |  | 2019-05-17 → 2019-05-21 (+4d) | 41d → 43d | 60% → 79% | 29d → 27d |  |  |
| 20 | Mise en place des élements sur le PCB | 2019-05-16 → 2019-05-20 (+4d) | 2019-05-17 → 2019-05-21 (+4d) |  |  | 29d → 27d |  |  |
| 24 | Fabrication du PCB de la manette universelle | 2019-05-08 → 2019-05-13 (+5d) | 2019-05-14 → 2019-05-17 (+3d) |  |  | 30d → 27d |  | constraint none → start no earlier than 2019-05-13 |
| 25 | **Assemblage** | 2019-05-13 A → 2019-04-22 A (-21d) | 2019-05-28 → 2019-05-10 (-18d) | 12d → 10d |  | 22d → 34d |  |  |
| 26 | Conception Batterie | 2019-05-13 → 2019-04-29 (-14d) | 2019-05-14 → 2019-04-30 (-14d) |  |  | 23d → 37d | Prototypage → none | constraint none → start no earlier than 2019-04-29 |
| 27 | Commande batterie | 2019-05-14 → 2019-04-30 (-14d) | 2019-05-14 → 2019-04-30 (-14d) |  |  | 23d → 37d |  |  |
| 28 | Délai commande de batterie | 2019-05-15 → 2019-05-06 (-9d) | 2019-05-21 → 2019-05-10 (-11d) |  |  | 28d → 34d |  |  |
| 29 | Conception du boitier | 2019-05-15 A → 2019-04-22 A (-23d) | 2019-05-28 → 2019-05-10 (-18d) |  |  | 22d → 34d | 27 → none |  |
| 30 | Manette universelle montée | 2019-05-28 → 2019-05-10 (-18d) | 2019-05-28 → 2019-05-10 (-18d) |  |  | 22d → 34d |  |  |
| 31 | **Adaptation minotaure** |  | 2019-05-10 → 2019-05-24 (+14d) | 15d → 25d |  | 34d → 24d |  |  |
| 35 | Prog boutons NKK | 2019-04-29 → 2019-05-13 (+14d) | 2019-05-10 → 2019-05-24 (+14d) |  |  | 35d → 24d | none → 34 | constraint start no earlier than 2019-04-29 → start no earlier than 2019-05-13 |
| 36 | Modification grand boîtier | 2019-05-06 → 2019-05-20 (+14d) | 2019-05-07 → 2019-05-21 (+14d) |  |  | 37d → 26d |  | constraint start no earlier than 2019-05-06 → start no earlier than 2019-05-20 |
| 37 | Montage manette minotaure | 2019-05-08 → 2019-05-22 (+14d) | 2019-05-08 → 2019-05-22 (+14d) |  |  | 37d → 26d |  |  |
| 38 | Manette minotaure terminée | 2019-05-08 → 2019-05-22 (+14d) | 2019-05-08 → 2019-05-22 (+14d) |  |  | 37d → 26d |  |  |

## Version 6 (saved 2019-05-10)

Last finish stays 2019-07-01.

Changed:

| ID | Task | Start | Finish | Duration | Total float | Predecessors | Other |
| --- | --- | --- | --- | --- | --- | --- | --- |
| 25 | **Assemblage** |  | 2019-05-10 → 2019-06-03 (+24d) | 10d → 25d | 34d → 19d |  |  |
| 26 | Conception Batterie | 2019-04-29 → 2019-05-13 (+14d) | 2019-04-30 → 2019-05-14 (+14d) |  | 37d → 27d |  | constraint start no earlier than 2019-04-29 → start no earlier than 2019-05-13 |
| 27 | Commande batterie | 2019-04-30 → 2019-05-20 (+20d) | 2019-04-30 → 2019-05-20 (+20d) |  | 37d → 23d |  | constraint none → finish no earlier than 2019-05-20 |
| 28 | Délai commande de batterie | 2019-05-06 → 2019-05-27 (+21d) | 2019-05-10 → 2019-06-03 (+24d) |  | 34d → 19d |  | constraint start no earlier than 2019-05-06 → start no earlier than 2019-05-27 |
| 30 | Manette universelle montée | 2019-05-10 → 2019-05-27 (+17d) | 2019-05-10 → 2019-05-27 (+17d) |  | 34d → 23d | 29 → 29, 24 | constraint none → finish no earlier than 2019-05-27 |

## Version 7 (saved 2019-05-13)

Note of the change: Merge branch 'dev' of https://github.com/MaillardJoan/manette into dev

Last finish stays 2019-07-01.

Added:

| ID | Task | Duration | Start | Finish | Predecessors |
| --- | --- | --- | --- | --- | --- |
| 30 | Fabrication du boitier | 5d | 2019-05-20 | 2019-05-24 | 29 |

Changed:

| ID | Task | Start | Finish | Duration | Complete | Total float | Predecessors | Other |
| --- | --- | --- | --- | --- | --- | --- | --- | --- |
| 25 | **Assemblage** |  |  |  | 44% → 28% |  |  |  |
| 29 | Conception du boitier |  | 2019-05-10 → 2019-05-17 (+7d) | 10d → 15d | 75% → 50% | 34d → 24d |  |  |
| 31 | Manette universelle montée |  |  |  |  |  | 29, 24 → 24, 30 |  |
| 32 | **Adaptation minotaure** |  | 2019-05-24 → 2019-05-27 (+3d) | 25d → 26d |  | 24d → 23d |  |  |
| 38 | Montage manette minotaure | 2019-05-22 → 2019-05-27 (+5d) | 2019-05-22 → 2019-05-27 (+5d) |  |  | 26d → 23d | 37 → 37, 36 |  |
| 39 | Manette minotaure terminée | 2019-05-22 → 2019-05-27 (+5d) | 2019-05-22 → 2019-05-27 (+5d) |  |  | 26d → 23d |  |  |
| 40 | **Adaptation manette console rétro** | 2019-04-29 → 2019-06-03 (+35d) | 2019-04-30 → 2019-06-17 (+48d) | 2d → 10d |  | 42d → 10d |  |  |
| 41 | Implémentation Bluetooth et batterie dans la manette existante | 2019-04-29 → 2019-06-03 (+35d) | 2019-04-30 → 2019-06-04 (+35d) |  |  | 42d → 18d |  | constraint start no earlier than 2019-04-29 → start no earlier than 2019-06-03 |
| 42 | Adaptation manette console rétro terminée | 2019-04-30 → 2019-06-17 (+48d) | 2019-04-30 → 2019-06-17 (+48d) |  |  | 42d → 10d |  | constraint none → finish no earlier than 2019-06-17 |
| 43 | **Administratif** |  |  |  | 36% → 53% |  |  |  |
| 44 | Rédaction des documents techniques |  |  |  | 37% → 55% |  |  |  |

## Version 8 (saved 2019-06-04)

Note of the change: Merge branch 'dev' of https://github.com/JoanMaillard/Manette into dev

Last finish stays 2019-07-01.

Changed:

| ID | Task | Start | Finish |
| --- | --- | --- | --- |
| 19 | Délai de commande des élements |  | 2019-05-07 A → 2019-05-08 A (+1d) |
| 25 | **Assemblage** | 2019-04-22 A → 2019-04-29 A (+7d) |  |
| 29 | Conception du boitier | 2019-04-22 A → 2019-04-29 A (+7d) |  |
| 35 | Fabrication du PCB des boutons NKK |  | 2019-04-30 A → 2019-05-01 A (+1d) |

## Version 9 (saved 2019-06-04)

Note of the change: Update plan_projet_manette_2019.mpp

Last finish stays 2019-07-01. Complete tasks 25 → 26.

Added:

| ID | Task | Duration | Start | Finish | Constraint |
| --- | --- | --- | --- | --- | --- |
| 49 | Revue de projet 2 | 0d | 2019-05-10 | 2019-05-10 | start no earlier than 2019-05-10 |
| 50 | Revue de projet 3 | 0d | 2019-06-04 | 2019-06-04 | start no earlier than 2019-06-04 |

Removed: 47 Rédaction cahier des charges pour le projet Robot MCT

Changed:

| ID | Task | Start | Finish | Duration | Complete | Total float | Predecessors | Other |
| --- | --- | --- | --- | --- | --- | --- | --- | --- |
| 16 | **Conception layout manette universelle** |  | 2019-05-21 → 2019-06-12 (+22d) | 43d → 57d | 79% → 78% | 27d → 13d |  |  |
| 20 | Mise en place des élements sur le PCB | 2019-05-20 → 2019-06-11 (+22d) | 2019-05-21 → 2019-06-12 (+22d) |  |  | 27d → 13d |  |  |
| 22 | Conception du PCB de la manette universelle |  | 2019-05-07 A → 2019-05-26 A (+19d) | 8d → 21d |  |  |  | constraint start no earlier than 2019-04-08 → finish no earlier than 2019-05-26 |
| 23 | PCB prêt pour commande | 2019-05-07 A → 2019-05-27 A (+20d) | 2019-05-07 A → 2019-05-27 A (+20d) |  |  |  |  |  |
| 24 | Fabrication du PCB de la manette universelle | 2019-05-13 → 2019-05-27 (+14d) | 2019-05-17 → 2019-06-07 (+21d) | 5d → 9d |  | 27d → 13d |  | constraint start no earlier than 2019-05-13 → start no earlier than 2019-05-27 |
| 25 | **Assemblage** | 2019-04-29 A → 2019-05-13 A (+14d) | 2019-06-03 → 2019-06-17 (+14d) | 25d → 23.5d | 28% → 42% | 19d → 10d |  |  |
| 26 | Conception Batterie | 2019-05-13 → 2019-06-03 (+21d) | 2019-05-14 → 2019-06-04 (+21d) |  |  | 27d → 13d |  | constraint start no earlier than 2019-05-13 → start no earlier than 2019-06-03 |
| 27 | Commande batterie | 2019-05-20 → 2019-06-04 (+15d) | 2019-05-20 → 2019-06-04 (+15d) |  |  | 23d → 13d |  |  |
| 28 | Délai commande de batterie | 2019-05-27 → 2019-06-11 (+15d) | 2019-06-03 → 2019-06-17 (+14d) |  |  | 19d → 10d |  | constraint start no earlier than 2019-05-27 → start no earlier than 2019-06-10 |
| 29 | Conception du boitier | 2019-04-29 A → 2019-05-13 A (+14d) | 2019-05-17 → 2019-06-04 (+18d) |  | 50% → 75% | 24d → 13.25d |  |  |
| 30 | Fabrication du boitier | 2019-05-20 → 2019-06-04 (+15d) | 2019-05-24 → 2019-06-12 (+19d) |  |  | 24d → 13.25d |  | constraint none → start no earlier than 2019-05-27 |
| 31 | Manette universelle montée | 2019-05-27 → 2019-06-17 (+21d) | 2019-05-27 → 2019-06-17 (+21d) |  |  | 23d → 10d | 24, 30 → 24, 30, 28 |  |
| 32 | **Adaptation minotaure** |  | 2019-05-27 → 2019-06-24 (+28d) | 26d → 44d | 32% → 77% | 23d → 5d |  |  |
| 36 | Prog boutons NKK | 2019-05-13 A | 2019-05-24 → 2019-05-16 A (-8d) | 10d → 4d | 0% → 100% | 23d → none |  |  |
| 37 | Modification grand boîtier | 2019-05-20 → 2019-06-11 (+22d) | 2019-05-21 → 2019-06-12 (+22d) |  |  | 26d → 12d |  | constraint start no earlier than 2019-05-20 → start no earlier than 2019-06-10 |
| 38 | Montage manette minotaure | 2019-05-27 → 2019-06-17 (+21d) | 2019-05-27 → 2019-06-17 (+21d) |  |  | 23d → 10d |  | constraint none → start no earlier than 2019-06-17 |
| 39 | Manette minotaure terminée | 2019-05-27 → 2019-06-24 (+28d) | 2019-05-27 → 2019-06-24 (+28d) |  |  | 23d → 5d |  | constraint none → finish no earlier than 2019-06-24 |
| 40 | **Adaptation manette console rétro** | 2019-06-03 → 2019-06-11 (+8d) |  | 10d → 5d |  |  |  |  |
| 41 | Implémentation Bluetooth et batterie dans la manette existante | 2019-06-03 → 2019-06-11 (+8d) | 2019-06-04 → 2019-06-12 (+8d) |  |  | 18d → 13d |  | constraint start no earlier than 2019-06-03 → start no earlier than 2019-06-10 |

## Version 10 (saved 2019-06-14)

Note of the change: Merge branch 'dev' of https://github.com/JoanMaillard/Manette into dev

Last finish stays 2019-07-01. Complete tasks 26 → 33.

Changed:

| ID | Task | Start | Finish | Duration | Complete | Total float | Other |
| --- | --- | --- | --- | --- | --- | --- | --- |
| 16 | **Conception layout manette universelle** |  | 2019-06-12 → 2019-06-17 (+5d) | 57d → 60d | 78% → 96% | 13d → 10d |  |
| 20 | Mise en place des élements sur le PCB | 2019-06-11 → 2019-06-14 (+3d) | 2019-06-12 → 2019-06-17 (+5d) |  |  | 13d → 10d |  |
| 24 | Fabrication du PCB de la manette universelle | 2019-05-27 → 2019-05-29 A (+2d) | 2019-06-07 → 2019-06-13 A (+6d) | 9d → 10d | 0% → 100% | 13d → none | constraint start no earlier than 2019-05-27 → finish no earlier than 2019-06-13 |
| 25 | **Assemblage** |  |  |  | 42% → 74% |  |  |
| 26 | Conception Batterie | 2019-06-03 A | 2019-06-04 A |  | 0% → 100% | 13d → none |  |
| 28 | Délai commande de batterie | 2019-06-11 A |  |  | 0% → 60% |  |  |
| 29 | Conception du boitier |  | 2019-06-04 A |  | 75% → 100% | 13.25d → none |  |
| 37 | Modification grand boîtier | 2019-06-11 → 2019-06-14 (+3d) | 2019-06-12 → 2019-06-17 (+5d) |  |  | 12d → 9d | constraint start no earlier than 2019-06-10 → start no earlier than 2019-06-14 |
| 38 | Montage manette minotaure | 2019-06-17 → 2019-06-18 (+1d) | 2019-06-17 → 2019-06-18 (+1d) |  |  | 10d → 9d |  |
| 40 | **Adaptation manette console rétro** | 2019-06-11 A |  |  | 0% → 50% |  |  |
| 41 | Implémentation Bluetooth et batterie dans la manette existante | 2019-06-11 A |  |  | 0% → 50% |  |  |
| 43 | **Administratif** |  |  |  | 53% → 84% |  |  |
| 44 | Rédaction des documents techniques |  |  |  | 55% → 86% |  |  |
| 48 | Revue de projet | 2019-03-28 A | 2019-03-28 A |  | 0% → 100% | 55d → none |  |
| 49 | Revue de projet 2 | 2019-05-10 A | 2019-05-10 A |  | 0% → 100% | 35d → none |  |
| 50 | Revue de projet 3 | 2019-06-04 A | 2019-06-04 A |  | 0% → 100% | 19d → none |  |
| 52 | Bilan du projet | 2019-05-27 A | 2019-05-27 A |  | 0% → 100% | 24d → none |  |

## Version 11 (saved 2019-06-17)

Note of the change: doc

Last finish stays 2019-07-01. Complete tasks 33 → 35.

Changed:

| ID | Task | Start | Finish | Duration | Complete | Total float | Other |
| --- | --- | --- | --- | --- | --- | --- | --- |
| 16 | **Conception layout manette universelle** |  | 2019-06-17 A |  | 96% → 100% | 10d → none |  |
| 20 | Mise en place des élements sur le PCB | 2019-06-14 A | 2019-06-17 A |  | 0% → 100% | 10d → none |  |
| 25 | **Assemblage** |  | 2019-06-17 → 2019-06-20 (+3d) | 23.5d → 25.75d | 74% → 93% | 10d → 7.75d |  |
| 28 | Délai commande de batterie |  | 2019-06-17 A |  | 60% → 100% | 10d → none |  |
| 30 | Fabrication du boitier | 2019-06-04 → 2019-06-13 A (+9d) | 2019-06-12 → 2019-06-20 (+8d) |  | 0% → 60% | 13.25d → 7.75d | constraint start no earlier than 2019-05-27 → start no earlier than 2019-06-13 |
| 31 | Manette universelle montée | 2019-06-17 → 2019-06-20 (+3d) | 2019-06-17 → 2019-06-20 (+3d) |  |  | 10d → 7.75d |  |
| 37 | Modification grand boîtier | 2019-06-14 → 2019-06-17 (+3d) | 2019-06-17 → 2019-06-18 (+1d) |  |  | 9d → 8d | constraint start no earlier than 2019-06-14 → start no earlier than 2019-06-17 |
| 38 | Montage manette minotaure | 2019-06-18 → 2019-06-19 (+1d) | 2019-06-18 → 2019-06-19 (+1d) |  |  | 9d → 8d |  |
| 43 | **Administratif** |  |  |  | 84% → 86% |  |  |
| 44 | Rédaction des documents techniques |  |  |  | 86% → 89% |  |  |

## Version 12 (saved 2019-06-25)

Note of the change: Merge branch 'dev' of https://github.com/JoanMaillard/Manette into dev

Last finish stays 2019-07-01. Complete tasks 35 → 37.

Changed:

| ID | Task | Start | Finish | Duration | Complete | Total float | Other |
| --- | --- | --- | --- | --- | --- | --- | --- |
| 25 | **Assemblage** |  | 2019-06-20 → 2019-06-26 (+6d) | 25.75d → 30.5d | 93% → 65% | 7.75d → 3d |  |
| 27 | Commande batterie | 2019-06-04 A | 2019-06-04 A |  | 0% → 100% | 13d → none |  |
| 28 | Délai commande de batterie | 2019-06-11 A → 2019-06-11 | 2019-06-17 A → 2019-06-26 (+9d) | 5d → 12d | 100% → 0% | none → 3d |  |
| 30 | Fabrication du boitier |  | 2019-06-20 A |  | 60% → 100% | 7.75d → none |  |
| 31 | Manette universelle montée | 2019-06-20 → 2019-06-26 (+6d) | 2019-06-20 → 2019-06-26 (+6d) |  |  | 7.75d → 3d |  |
| 32 | **Adaptation minotaure** |  |  |  | 77% → 92% |  |  |
| 37 | Modification grand boîtier | 2019-06-17 A | 2019-06-18 A |  | 0% → 100% | 8d → none |  |
| 40 | **Adaptation manette console rétro** |  | 2019-06-17 → 2019-06-28 (+11d) | 5d → 14d | 50% → 33% | 10d → 1d |  |
| 41 | Implémentation Bluetooth et batterie dans la manette existante |  | 2019-06-12 → 2019-06-28 (+16d) | 2d → 3d | 50% → 33% | 13d → 1d | constraint start no earlier than 2019-06-10 → finish no earlier than 2019-06-28 |
| 42 | Adaptation manette console rétro terminée | 2019-06-17 → 2019-06-28 (+11d) | 2019-06-17 → 2019-06-28 (+11d) |  |  | 10d → 1d | constraint finish no earlier than 2019-06-17 → finish no earlier than 2019-06-28 |
